# Power Platform Team Agile Project Plan

Schedule from MS Project, 2025-01-13 to 2025-01-29, A marks actual dates.

## Calendars

- Standard: Mon-Fri 08:00-12:00, 13:00-17:00; Sat-Sun off.

## Resources

| Resource | Group |
| --- | --- |
| Guynes Daniel M (Contractor) | Information Technology |
| Musser Samuel N (Contractor) | National Headquarters (Reserved) |
| Prattipati Ramyatejaswi (Contractor) | National Headquarters (Reserved) |
| Weeks Benjamin C | Information Technology |
| Medina Vargas Juan S | Information Technology |
| Perez Ruiz Omar A | Information Technology |
| Guttenberg Ronald C | Information Technology |
| Neuman Jason A | Information Technology |
| Michael Nettles |  |

## Schedule

| ID | WBS | Task | Type | Duration | Start | Finish | Predecessors | Complete | Remaining | Total slack | Resources | Work | Actual work |
| --- | --- | --- | --- | --- | --- | --- | --- | --- | --- | --- | --- | --- | --- |
| 1 | 1 | **Create Pipeline Setup** |  | 8d? | 2025-01-16 A | 2025-01-27 |  | 57% | 3.43d? | 0d |  | 124h | 104h |
| 2 | 1.1 | Build data table to hold Environments Data | manual | 2d | 2025-01-16 A | 2025-01-17 A |  | 100% |  |  |  |  |  |
| 3 | 1.2 | PIPE-Build data table to hold Security groups attached to environments | manual | 4h | 2025-01-20 A | 2025-01-20 A | 2 | 100% |  |  | Guynes Daniel M (Contractor) | 4h | 4h |
| 4 | 1.3 | Build data table to hold Solutions for environment | manual | 2d | 2025-01-20 A | 2025-01-21 A | 2 | 100% |  |  |  |  |  |
| 5 | 1.4 | PIPE-Create Pipline Process Flow Document | manual | 8d | 2025-01-16 A | 2025-01-27 A |  | 100% |  |  | Guynes Daniel M (Contractor) | 64h | 64h |
| 6 | 1.5 | PIPE-Create documentation that highlights the Pipeline process from Start to Finish | manual | 1d? | 2025-01-16 A | 2025-01-16 |  | 50% | 0.5d? |  |  | 24h | 12h |
| 7 | 1.6 | PIPE-Build data table to hold UAT Questionnairre | manual | 2d | 2025-01-16 | 2025-01-17 |  |  |  |  |  |  |  |
| 8 | 1.7 | Build data table to hold contacts related to environments, pipelines and solutions | manual | 1d | 2025-01-16 A | 2025-01-16 A |  | 100% |  |  |  |  |  |
| 9 | 1.8 | PIPE: Create new Pipeline Host environment | manual | 1d | 2025-01-16 A | 2025-01-16 A |  | 100% |  |  |  |  |  |
| 10 | 1.9 | PIPE-Create Flow that validates pipeline solution | manual | 2d | 2025-01-16 A | 2025-01-17 |  | 50% | 1d |  | Guynes Daniel M (Contractor) | 16h | 8h |
| 11 | 1.10 | PIPE-Create Flow at Approval to ensure UAT prior to approval | manual | 2d | 2025-01-20 | 2025-01-21 | 10, 7 |  |  |  |  |  |  |
| 12 | 1.11 | PIPE-Create Flow that will "finish" the production deployment | manual | 2d | 2025-01-22 | 2025-01-23 | 11 |  |  |  |  |  |  |
| 13 | 1.12 | PIPE-Create Canvas App for user to fill out regarding UAT | manual | 4d | 2025-01-20 | 2025-01-23 | 7 |  |  |  |  |  |  |
| 14 | 1.13 | PIPE-Build data table to maintain Security Change Management approvals | manual | 2d | 2025-01-20 A | 2025-01-21 A | 2 | 100% |  |  | Guynes Daniel M (Contractor) | 16h | 16h |
| 15 | 1.14 | PIPE-Build data table to hold Environments Data Details | manual | 2d | 2025-01-20 | 2025-01-21 | 2 |  |  |  |  |  |  |
| 16 | 2 | **Questions / Research** |  | 1d | 2025-01-13 A | 2025-01-13 |  | 40% | 0.6d | 0d |  | 32h | 32h |
| 17 | 2.1 | Do we want to have a separate Entra Group just for Pipeline Deployment rights? | manual | 1d | 2025-01-13 A | 2025-01-13 A |  | 100% |  |  | Guynes Daniel M (Contractor) | 8h | 8h |
| 18 | 2.2 | Do we want to require approval (automated) for Pipelines? | manual | 1d | 2025-01-13 A | 2025-01-13 A |  | 100% |  |  | Guynes Daniel M (Contractor) | 8h | 8h |
| 19 | 2.3 | Do we want to validate the Solution to ensure we are doing due-diligence against Cyber / Privacy? | manual | 1d | 2025-01-13 A | 2025-01-13 A |  | 100% |  |  | Guynes Daniel M (Contractor) | 8h | 8h |
| 20 | 2.4 | Do we want to automatically create a Test environment with a Sandbox environment? | manual | 1d | 2025-01-13 | 2025-01-13 |  |  |  |  |  |  |  |
| 21 | 2.5 | Do we want to revisit the naming for Environments? | manual | 1d | 2025-01-13 | 2025-01-13 |  |  |  |  |  |  |  |
| 22 | 2.6 | Do we want to allow Team Environments in Power Platform? - Contact IT-UNS and Research how this is turned on/off | manual | 1d | 2025-01-13 | 2025-01-13 |  |  |  |  |  |  |  |
| 23 | 2.7 | Determine from PPT group where would be the best place to handle and maintain our team data | manual | 1d | 2025-01-13 A | 2025-01-13 A |  | 100% |  |  | Guynes Daniel M (Contractor) | 8h | 8h |
| 24 | 2.8 | What metrics do we want to make available to Management? | manual | 1d? | 2025-01-13 | 2025-01-13 |  |  |  |  |  |  |  |
| 25 | 2.9 | What metrics do we want to make available to public? | manual | 1d | 2025-01-13 | 2025-01-13 |  |  |  |  |  |  |  |
| 26 | 2.10 | What Metrics do we want to maintain internally? | manual | 1d | 2025-01-13 | 2025-01-13 |  |  |  |  |  |  |  |
| 27 | 2.11 | Do we want to revisit the naming conventions for Entra Security groups? | manual | 1d | 2025-01-13 | 2025-01-13 |  |  |  |  |  |  |  |

Notes:
- 2: Build a databse that will contain all of the Environments with the following fields: / Table name: Environment / ·Id (long int: unique id) / ·Name (text: Name of environment) / ·GUID (text: GUID according to M365) / ·Type (int/choice: i.e. Sandbox, Production) / ·Function (int/choice: i.e. Dev, test, Prod) / ·Dataverse (bool: Yes/No) / ·Managed (bool: Yes/No) / ·Audit Length (int: i.e. # days) / ·OwningOrganization
- 3: Create a table that holds a list of Security Groups attached to each Environment as follows: / Table name: CoEEnvironmentSecurityGroups / ·Id (pk, long, not null, auto-increment) / ·EnvironmentListId --> Lookup to CoEEnvironment.ID / ·EnvironmentListIdDisplayName --> CoEEnvironment.DisplayName / ·EnvironmentGuid (string, 50) / ·EnvironmentTeamNameEntraGroup (string, 50) / ·EnvironmentTeamNameEntraGroupGuid (string, 50) / ·EnvironmentTeamNameSecurityRoles (string, 255) / 2/3/2025-Updating task ticket to include additional fields.
- 4: Create a table that holds a list of solutions as follows: / Table name: Solution / ·Id / ·SolutionName / ·GUID / ·Approved / ·ApprovalDate / ·SolutionVersionOfApproval / ·EnvironmentId (FK)
- 5: Create a Process Flow specific to the process from Request initiation to deployment.
- 6: This should include the creation of the Pipeline, the supporting Entra groups, the insertion of environments, the creation or the Pipeline, and the creation of the Deployment Stages. / 2.18.2025-UPDATE: Step 1 will be the creation of the initial draft.
- 7: The management would like to have an interceding approval process within the deployment of pipelines between Test and Prod to enforce a level of responsibility by the deploying group to ensure that they are taking responsibility for UAT and ensuring that the deployment to Test went according to plan. / Build a Table to house the questionnaire information related to a TBD built form that will ask the users to verify that they performed appropriate UAT. / Table Name: Prod / ·Id / ·DeployToTestSuccess / ·UATPerformed / ·UATSuccess / ·Submitter / ·PipelineRunId
- 8: A table should be built that easily allows us to contact the appropriate users when handling Environments, Solutions, or Pipelines. This table may be best combined with the Security group table. / UPDATE: Table has been built. but has no data currently. Will add this data in over time as we reach out to the various Solutions, Environments and build Pipelines (should be Pipeline Entra group).
- 9: Discussion has taken place, and we have opted to create a new single environment. This will alleviate the need to potentially duplicate our governance flows and applications across Host environments. This will allow us to instantiate governance across all Pipelines - all coming from the same Host, and all adhering to the single Host environment. / 2.13.2025-UPDATE: Host site has been created: https://host-pipeline.crm9.dynamics.com/. / 2.12.2025-UPDATE: Ben Weeks has made the executive decision to title the Host: HOST-PIPELINE
- 10: Create a flow that will intercept the deployment request at the time of a request submission. / Check the Solution table to determine if the Solution has been approved within the last 12 months. / If Yes - continue / If No - send email to Pipeline Deployment team
- 11: Create a flow that will intercept the deployment request at the time of a request submission. / If the deployment is between Test and Prod, halt the deployment and send an email to the Pipeline deployment team and let them know that a depoyment has been initiated and they need to click a link to a form that needs to be filled out prior to the deployment being finished.
- 12: Once the user has filled out the UAT form, and all is successful a deployment flow should be called from the form (when the data is saved) that will finish the deployment.
- 13: Questions: / 1. Was the deployment to Test a success without issue? / 2. Did you perform UAT AND was the UAT successful to expected results? / Capture: User who fills out the form; Pipeline Deployment Run Id; And the questions above
- 14: This table should record the approvals of Environmenst and solutions with regards to Premium Connectors, Custom Connectors, or other objects that are not part of with the approval id. / This will allow the PPT to verify usage of premium connectors and items. / Table Name: SecurityChangeApproval / ·Id / ·EnvironmentId (FK) / ·ApprovedItem / ·ApprovalId / ·DateOfApproval
- 15: This table will be designed to handle all details of all environment settings that are critical. / 2.12.2025-UPDATE: Pretty sure we do not need this. We can pull detail data as needed directly from the CoE. This was intended primarily to extract the Feature settings and Audit log information from Environments. If that data may be extracted, we will pull it perhaps in a Flow that will send emails out when issues are identified .,.. not sure we need the data extracted out to a separate location.
- 17: The way that Microsoft recommends setting up Pipelines, the Maker group has access to all three levels (Sandbox, Test, Prod). However, I anticipate many BU heads not wanting all members of the Maker group to have the ability to deploy. So, recommend making a Pipeline Deployment group for each pipeline group instead of using the Maker group. This allows the BUs to determine who can deploy and who cannot. * NOTE that the pipline deployer group will have teh same rights as the Maker group (Security Roles). / ANSWER: We agreed that it would be best to separate the Pipeline deployment group from the Maker group so allow IRS Managers of the environments to slim down the number of people who can deploy. It should be noted that the Pipeline deployment group has the same rights as a Maker group.
- 18: If we do not provide this ability, we cannot intercede the deployment approval process. / We decided that we do want to provide this. It will be in the form of auto-processing via a workflow that ensures that the solution being deployed is one that is approved by our team. If it is deploying to prod, we will ensure that they fill out a brief questionnaire first that puts the onus of UAT insurance on them. / ANSWER: Yes - we opted to intercept the pipeline process for deploying to Prod. Per Michael Nettles we are to create a Form that they must fill out to state that they performed UAT in their test environment. / The approval process will pause the deployment, and send an email to the Pipeline group for the solution which has a link to a form that they will fill out. If they meet the criteria when the form is saved, a new process will kick of the the Deployment Run Id, to un-pause the deployment and proceed with the deployment. / If they do not meet the criteria, it will kick off a flow that will fail the deployment and send an email to the pipeline group with the reason.
- 19: If we are to provide Pipelines to everyone (or even some) we need to ensure that we have some form of validation of what they are deploying. Currently they only need to submit a brief architecture to us for the creation of their environment. However, once they have their pipelines, they can deploy anything they want without having to get checked against cyber security or privacy. I think we need to have a table that contains each environment's solutions. If they deploy against a known solution that we have approved, it is all good. If it is a new solution, we balk and have them submit proper paperwork for the new solution. / ANSWER: We discussed this and agreed that we should indeed perform a Solution check to ensure that we have the approved solution on file - and if it is not, we will send them an email with a link to instructions on what they need to do. / We should re-instate the TRB meeting to ensure that we review these documents, and from the time of submittal the document submitted should be approved or denied within 5 business days by PPT, Cyber and Privacy. Look to SDLC to do their job in helping us.
- 20: Since our intent is to create pipelines for everyone, and even if we are doing manual deployments, we should enforce deployments to a test environment first. / First, this will help us identify deployment issues prior to deploying to prod. / Second, we should be enforcing due diligence upon the users of UAT and best practice SDLC in their app creations. / UPDATE - There is a split in the group primarily dealing with ensuring that the actions required to create the separate (Test) environment is "trackable" from a work production task perspective. This means we need to somehow ensure that a single request for a new Environment (Sandbox) is being shown as multiple actions/tasks with regards to creating the Test environment and perhaps the Security Groups that go with the single request entry. / UPDATE: YES - we have determined that this is the correct path for us as we move into Pipelines. Update the Documentation to reflect this process. / UPDATE: This was briefly discussed in Task #45. Essentially, to ensure we can provide a high-level of self-regulatory capabilities, we should provide them with both a Sandbox and Test environment at the same time to ensure that they have the ability to operate in a Sprint/Agile method and may realize their efforts rather quickly. Awaiting confirmation from the group.
- 21: Our naming convention for environments in some cases is not standard. I think this is something we should revisit, as well as ensure it is documented in our procedural steps.
- 22: There is a single Team Environment … what do we do with this? / UPDATE: Contact IT-UNS to determine whether they have the ability to enable this setting, or have a say in the claim. We do not know where this setting or capability is found (in terms of turning on/off). / UPDATE - Speak with IT UNS to determine if they allow this, or if it is turned off from the TEAMS side. If they have no control, then we make the decision as to whether or not we do allow these. See https://learn.microsoft.com/en-us/power-platform/admin/about-teams-environment for more information. / Create a new task to speak with IT-UNS to determine what we will do with this.
- 23: We need a database that will handle data related to Pipeline Workflows, Environment and Pipeline and Solution POCs, and Solution Architecture, Environment, and other PPT object tracking. If we use SharePoint we are limited by SharePoint problems. Dataverse ciould have its own issues and may be harder to access in some cases; we do not have SQL or other core DB access. / Update: Have chosen to use the TM-IT-EOPS-M365 Power Platform Project site that is specific to our team. / Update: Michael Nettles and the team opted to use SharePoint. We need to determine what SharePoint site to use for the data. We just need to know where we want to place our long term data storage to suppoer PPT initiatives.
- 24: Management does not need to see or know everything, as there is no functional reason for them to know. However, they may want to see core elements like Total number of Environments, Pipelines, Apps, Licenses being used for Premium, etc. / They also should have some form of access to some Burndown charts such as: / ·Sprint Burndown / ·Orphaned Apps burndown / ·Orphaned Flows burndown / ·
- 25: What metrics do we want to share to the public users of IRS if any? Do we want to share anything with them? Perhaps something like total number of environments, or apps, just so they can see?
- 26: Other than our Sprint and Backlog burndown, what Power Platform / Power BI Metrics do we want to keep for our team to be able to see at a glance?
- 27: Currently our naming convention for Entra Security Groups in relation to environments is lengthy and contains perhaps some unnecessary fluff. I recommend we revisit the naming strategy to reduce the length but maintain the accuracy.

| ID | WBS | Task | Type | Duration | Start | Finish | Complete | Remaining | Total slack | Deadline | Resources | Work | Actual work |
| --- | --- | --- | --- | --- | --- | --- | --- | --- | --- | --- | --- | --- | --- |
| 28 | 3 | **COE** |  | 5d | 2025-01-16 A | 2025-01-22 | 9% | 4.56d | 0d |  |  | 40h | 24h |
| 29 | 3.1 | Determine who has Admin rights in Personal Productivity and remove their Sys Admin access after notifying them | manual | 1d | 2025-01-16 | 2025-01-16 |  |  |  |  |  |  |  |
| 30 | 3.2 | Check apps that are in DLP Violation and resolve. | manual | 2d | 2025-01-16 | 2025-01-17 |  |  |  |  |  |  |  |
| 31 | 3.3 | Resolve the top 10 Orphaned Connections | manual | 5d | 2025-01-16 | 2025-01-22 |  |  |  |  |  |  |  |
| 32 | 3.4 | Resolve the top 10 orphaned Solutions | manual | 1d | 2025-01-16 | 2025-01-16 |  |  |  |  |  |  |  |
| 33 | 3.5 | Resolve the top 10 Orphaned Flows | manual | 5d | 2025-01-16 | 2025-01-22 |  |  |  |  |  |  |  |
| 34 | 3.6 | Resolve the top 10 Orphaned Apps | manual | 5d | 2025-01-16 | 2025-01-22 |  |  |  |  |  |  |  |
| 35 | 3.7 | Check for Environments without a DLP | manual | 1d | 2025-01-16 | 2025-01-16 |  |  |  |  | Weeks Benjamin C; Perez Ruiz Omar A | 16h |  |
| 36 | 3.8 | For Apps with 10 or more users, reach out and instruct them to move into an environment (dedicated or BU) | manual | 5d | 2025-01-16 | 2025-01-22 |  |  |  |  |  |  |  |
| 37 | 3.9 | Add total Orphaned Flows to metrics | manual | 1d | 2025-01-16 A | 2025-01-16 A | 100% |  |  |  | Guynes Daniel M (Contractor) | 8h | 8h |
| 38 | 3.10 | Add total Orphaned Connections to metrics | manual | 1d | 2025-01-16 A | 2025-01-16 A | 100% |  |  |  | Guynes Daniel M (Contractor) | 8h | 8h |
| 39 | 3.11 | Add Total Orphaned Apps to metrics | manual | 1d | 2025-01-16 A | 2025-01-16 A | 100% |  |  |  | Guynes Daniel M (Contractor) | 8h | 8h |
| 40 | 3.12 | For Flows with 10 or more users, reach out and instruct them to move into an environment (dedicated or BU) | manual | 5d | 2025-01-16 | 2025-01-22 |  |  |  |  |  |  |  |
| 41 | 3.13 | Resolve any Environments that are in Administration Mode | manual | 1d | 2025-01-16 | 2025-01-16 |  |  |  |  |  |  |  |
| 42 | 4 | **Quarterly** |  | 3d | 2025-01-16 | 2025-01-20 |  |  | 0d |  |  |  |  |
| 43 | 4.1 | Check if there are any new Data Gateway updates and apply them | manual | 3d | 2025-01-16 | 2025-01-20 |  |  |  |  |  |  |  |
| 44 | 4.2 | Check to see if there are any new COE updates and apply them | manual | 3d | 2025-01-16 | 2025-01-20 |  |  |  |  |  |  |  |
| 45 | 5 | **Research** |  | 1d | 2025-01-16 A | 2025-01-16 A | 100% |  |  |  |  |  |  |
| 46 | 5.1 | Demonstrate how we may pull core data from COE into our tables to support our efforts (i.e. pull all Environments and their details, Attached Security Groups, etc.) | manual | 1d | 2025-01-16 A | 2025-01-16 A | 100% |  |  |  |  |  |  |
| 47 | 6 | O&M-Ensure all Environments have the proper Audit Settings | manual | 2d | 2025-01-16 | 2025-01-17 |  |  |  |  | Guynes Daniel M (Contractor) | 16h |  |
| 48 | 7 | Answer Governance Questions for Upper Management | manual | 1d | 2025-01-16 A | 2025-01-16 A | 100% |  |  | 2025-01-22 | Guynes Daniel M (Contractor); Musser Samuel N (Contractor); Weeks Benjamin C | 24h | 24h |
| 49 | 8 | O&M-What do we do with Apps, Flows, and Connections that are no longer needed or orphaned? | manual | 1d | 2025-01-16 | 2025-01-16 |  |  |  |  | Prattipati Ramyatejaswi (Contractor); Perez Ruiz Omar A; Medina Vargas Juan S | 24h |  |
| 50 | 9 | CISA BOD 25-01: Implementing Secure Practices for Cloud Services Required Configurations | manual | 1d | 2025-01-16 A | 2025-01-16 A | 100% |  |  |  |  |  |  |
| 51 | 10 | Power Automate Desktop on Ent Service Profile | manual | 1d? | 2025-01-16 | 2025-01-16 |  |  |  |  |  |  |  |
| 52 | 11 | Your Azure/M365 Application Registration for IRS Power Platform MS 365 Management | manual | 1d | 2025-01-16 | 2025-01-16 |  |  |  | 2025-02-21 | Guttenberg Ronald C | 8h |  |
| 53 | 12 | Review the GCC Admin/ Power BI Admin settings. | manual | 1d? | 2025-01-16 | 2025-01-16 |  |  |  |  |  |  |  |
| 54 | 13 | Research what each element in the Environment Settings-->Features does (document) | manual | 1d? | 2025-01-16 | 2025-01-16 |  |  |  |  |  |  |  |
| 55 | 14 | Ensure that all Copilot and AI is turned off in each environment | manual | 0.9d | 2025-01-16 A | 2025-01-16 | 10% | 0.81d |  |  | Musser Samuel N (Contractor) | 7.2h | 0.72h |
| 56 | 15 | Develop a Governance Document that defines the Settings and Governance of all Power Platform items. | manual | 1d? | 2025-01-16 | 2025-01-16 |  |  |  |  |  |  |  |
| 57 | 16 | Speak with IT-UNS about allowing Teams Power Platform Environments | manual | 1d? | 2025-01-16 | 2025-01-16 |  |  |  |  |  |  |  |
| 58 | 17 | Update Documentation to reflect the creation of Test environment with Sandbox | manual | 1d? | 2025-01-16 | 2025-01-16 |  |  |  |  |  |  |  |
| 59 | 18 | What level of support or requirements are needed for a Power Platform Solutions / Environments with respect to Privacy, Cyber, and One SDLC. | manual | 1d | 2025-01-16 A | 2025-01-16 | 90% | 0.1d |  |  | Prattipati Ramyatejaswi (Contractor); Guttenberg Ronald C; Guynes Daniel M (Contractor); Neuman Jason A | 32h | 28.8h |
| 60 | 19 | Draft email stating we do not support development activities for Bus | manual | 1d | 2025-01-16 | 2025-01-16 |  |  |  |  | Michael Nettles | 8h |  |
| 61 | 20 | Major Incident Response Plan for Power Platform | manual | 1d? | 2025-01-16 | 2025-01-16 |  |  |  |  |  |  |  |
| 62 | 21 | How Can We Use Self Service Spotlight & Resources | manual | 1d? | 2025-01-16 | 2025-01-16 |  |  |  |  |  |  |  |
| 63 | 22 | Get Screen Grab Pics for CISA Proof | manual | 1d | 2025-01-16 A | 2025-01-16 | 50% | 0.5d |  |  | Guttenberg Ronald C; Musser Samuel N (Contractor) | 16h | 8h |
| 64 | 23 | PIPE: Create new Solution Architecture document | manual | 0.5d | 2025-01-16 A | 2025-01-16 | 90% | 0.05d |  |  | Guttenberg Ronald C [10%]; Guynes Daniel M (Contractor); Medina Vargas Juan S [10%]; Musser Samuel N (Contractor) [10%]; Neuman Jason A [10%]; Perez Ruiz Omar A [10%]; Prattipati Ramyatejaswi (Contractor) [10%]; Weeks Benjamin C [10%] | 6.8h | 6.12h |
| 65 | 24 | Review and Rewrite Power Platform Site pages | manual | 10d | 2025-01-16 A | 2025-01-29 |  | 10d |  |  | Guynes Daniel M (Contractor); Guttenberg Ronald C [10%]; Medina Vargas Juan S [10%]; Musser Samuel N (Contractor) [10%]; Neuman Jason A [10%]; Perez Ruiz Omar A [10%]; Prattipati Ramyatejaswi (Contractor) [10%]; Weeks Benjamin C [10%] | 136h |  |
| 66 | 25 | Discuss as Team - what the Power Platform Site Pages structure should be. | manual | 1d | 2025-01-16 | 2025-01-16 |  |  |  |  | Guttenberg Ronald C; Guynes Daniel M (Contractor); Medina Vargas Juan S; Michael Nettles; Musser Samuel N (Contractor); Neuman Jason A; Perez Ruiz Omar A; Prattipati Ramyatejaswi (Contractor); Weeks Benjamin C | 72h |  |

Notes:
- 29: There should only be PP Tenant Admins as System Admins in Personal Productivity. If there are others and they have a need we need to move them into a dedicated environment. We should not allow Sys Admin access in Personal Productivity.
- 30: There are currently applications that do not belong to COE that are in DLP violation, meaning that they are connecting to resources outside of the allowable connections within the DLP. Other than COE they are currently Personal Productivity and LBI-XBAC-Sandbox
- 31: There are at this time thousands of orphaned connections. Take the top ten, see what, if anything, is using them or being used by them and who may own the connection or what Environment it may belong to. Reach out to any contacts found to resolve the item by removing the connection or using it (or if they plan to use it).
- 32: There is no real Orphaned Solutions view in COE, however thare are from time to time Solutions that lose their ownership. So, in COE find any Solutions that have no Owner and reach out to the owners of the Apps or Flows or any other objects that are in the solution to find a new Solution Owner.
- 33: Identify the top ten orphaned Flows, see what, if anything, is using them or being used by them and who may own the Flow or what Environment it may belong to. Reach out to any contacts found to resolve the item by removing the Flow or using it (or if they plan to use it).
- 34: Identify the top ten orphaned Apps, see what, if anything, is using them or being used by them and who may own the Apps or what Environment it may belong to. Reach out to any contacts found to resolve the item by removing the App or using it (or if they plan to use it).
- 35: There are a few Environments that are not withing a DLP
- 36: When notifying them, give them a 2 week grace period to move forward with requesting either a new Environment or a request to migrate to an existing environment.
- 37: Add total orphaned flows to ouir metrics so we can show it is being addressed and show a burn down of them over time. / ANSWER: Added the number at the start of the Sprint to a Metric excel that will hopefully be moved into a permanent area once we identify our long term storage site.
- 38: Add total orphaned connections to ouir metrics so we can show it is being addressed and show a burn down of them over time. / ANSWER: Added the number at the start of the Sprint to a Metric excel that will hopefully be moved into a permanent area once we identify our long term storage site.
- 39: Add total orphaned apps to ouir metrics so we can show it is being addressed and show a burn down of them over time. / ANSWER: Added the number at the start of the Sprint to a Metric excel that will hopefully be moved into a permanent area once we identify our long term storage site.
- 40: When notifying them, give them a 2 week grace period to move forward with requesting either a new Environment or a request to migrate to an existing environment.
- 41: From time to time some users put themselves into Admin mode without knowledge. It is possible they did it on purpose, but we should ensure and reach out to them to understand why they have it in Admin mode.
- 43: Quarterly this should be done. However if there is an emergency than we should do it immediately (i.e. security hole fixed by Microsoft, etc.)
- 44: Quarterly this should be done. However if there is an emergency than we should do it immediately (i.e. security hole fixed by Microsoft, etc.)
- 46: Have been able to access the Environment and Solution table on the COE dataverse, and can "view" the data ... working on getting the information into Tables (lists) on our site. / UPDATE - This is a duplicate item - to build a flow that pulls data from COE into tables in another environment. This was proven, and the flow resides in the IT-EOPS-M365 Sandbox power platform environment.
- 47: Review all active environments and ensure they have the proper Audit settings: / Sandbox = 730 days (2 years) / Test = 730 days (2 years) / Production = 1825 days (5 years) / UPDATE: there were several environments that were inaccessible, so the Audit settings could not be verified. Resolve these remaining environments. / Update: Ensured all 189 Environments had the proper Audit settings. / Update: was able to go through over 100 environments and made approximately 50 updates to audit files. But this was not completed - can complete in the next Sprint.
- 48: power platform and power apps need to be under real governance / -how they are created / -how they are managed / -change in ownership? / -use case scenarios?~ easy/med/difficult / ~ / 1. what are we doing for pipelines today~ / 2. what are we not doing?~ / 3. any needed contract support or tool we could use? / ~ / Who approves the actual apps? documentation? / ~ / Need responses to these questions by COB Wednesday next week. / What are we doing? / What are we not doing?- app checkers? reviews? / What are we planning to do? / Are there other tools that we can use to help provide governance? / What results are we trying to achieve? / What are the use cases? / UPDATE - This was answered via email with all of the questions being answered specifically. There is another task that is outside of this with Rizu that is focused on a WBS for Pipelines which is a separate item, and being driven by Rizu and Ben. / Update: Met with ben and Juan and answered the questions. Ben will present to management tomorrow.
- 49: 2/3/2024- This appears to be an O&M related task and will label as such
- 50: BOD 25-01: Implementing Secure Practices for Cloud Services Required Configurations / CISA / The above link contains an overview of the policies MPP needs to apply, and how to apply them. / Here are the policies to be applied. / Policy IDActionDate Added / ModifiedDue Date / MS.POWERPLATFORM.1.1v1The ability to create production and sandbox environments SHALL be restricted to admins.12/17/202406/20/2025 / MS.POWERPLATFORM.1.2v1The ability to create trial environments SHALL be restricted to admins.12/17/202406/20/2025 / MS.POWERPLATFORM.2.1v1A DLP policy SHALL be created to restrict connector access in the default Power Platform environment.12/17/202406/20/2025 / MS.POWERPLATFORM.3.1v1Power Platform tenant isolation SHALL be enabled.12/17/202406/20/2025 / UPDATE: We are already compliant to this. However, through cyclical task maintenance, we will need to ensure that we regularly check to ensure that people do not have unwarranted or unnecessary access to systems, specifically Test, Prod environments, and most assuredly the Power Platform and Power BI Admin areas. / We need to add this into a Governance Document (which is in play via another Task). / To see Tenant isolation: https://gcc.admin.powerplatform.microsoft.us/governance/ and click on Tenant Isolation under Policies.
- 51: There is an effort needing MPP assistance to get the Power Automate Desktop client on the Ent Service Profile. / 2/3/2925- There needs to be clarity around LICENSING structure for the Power Automate DESKTOP application.
- 52: 2/3/2025- More detail needed for what we need to do/more context app registrations are Azure issues, more clarity requested. / -What breaks when this app reg expires on March 5? Maybe related to CoE / Morning, Ron.~~ This registration would need to be renewed and notifications transferred to the appropriate person. / Craig A. Swain / Enterprise Computing Center (ECC) Enterprise Operations (EOPS) IT / Techncial Advisor / ECC SharePoint Site / Book time with Swain Craig A / TOD:~ M-F, 8 AM - 4:30 PM EST / Cell:~ 571-271-2976 / Office: 681-260-4108 / From: TM-M365 Change Management Team <M365ChangeManagementTeam@irsgov.onmicrosoft.com> / Sent: Saturday, January 4, 2025 4:00 AM / To: Swain Craig A <Craig.A.Swain@irs.gov>; Lewis Kevin L <Kevin.L.Lewis@irs.gov> / Subject: Your App Registration is approaching renewal date - 60 Day Notice / Importance: High / Your Azure/M365 Application Registration for IRS Power Platform MS 365 Management , with details below, is approaching expiration. ~~This is your 60 day notice. This application registration will expire on 2025-03-05. / Please contact the M365 Support Team and coordinate for an M365 TRB review of your renewal. ~ / If you App Registration is no longer needed, likewise contact the M365 Support Team to coordinate M365 TRB review of the deactivation. / Details of your App Registration / Name of App Registration: ~IRS Power Platform MS 365 Management / Date of Creation: 2023-03-07T03:11:11Z / Owing Organization: EOPS WISD M365 MPP / Primary POC: Swain Craig A / Secondary POC: Lewis Kevin L / Renewal Date: 2025-03-05
- 53: * .; ; .; ; From Jose Pi: Thank you Donna. Jamie and Josh, please let me know about your availability for the next 2 weeks. In turn, I will work with Ron to coordinate with the Admins to review the GCC Admin/ Power BI Admin settings. At the moment, we are trying to address the following: / ~ / 1.Access errors with Dataverse from / 1.PBI Desktop and PBI Pro / 2.MS Excel / 2. Power Point connectivity to Power BI Pro currently turned off
- 55: UPDATE: It appears that in the Power Platform Wave 2 release that came out at the end of 2024 (around~ the October December time frame for GCC) they introduced new AI / Copilot capabilities (Microsoft Power Platform 2024 release wave 2 plan overview / Microsoft Learn). In that release, the AI prompts was introduced and Microsoft made it On by default which could be the issue. We have ensured that Copilot is turned off from a Tenant perspective for Power Platform, but this could be the reason some people are seeing things. The downside of this is that it is turned on by default, and it is only turned off per environment (not~ global switch). / UPDATE: I was able to turn this setting off for about 60-80 of the environments once I identified this issue and was still finishing ensuring that all audit settings were correct. So hopefully it should be less work.
- 57: See: https://learn.microsoft.com/en-us/power-platform/admin/about-teams-environment/ Work with IT-UNS to determine if they shut this ability down, or we do. And determine whether we want to add this ability or not.
- 58: It has been determined that we will create Test Environment at the same time we create Sandbox environments from their request. Update the documentation within our How To document to reflect that and we should be also adding this to our Site pages information.
- 59: (Danny) Instead of focusing just on One SDLC, we should be defining what "should" take place for each solution that is used in production. For example, "should" cyber be involved (best practice = yes), should "privacy" be involved (best practice = yes), should One SDLC be involved (no idea what they actually do, but I would assume yes ... and then we can decide how to move forward, and how much of the "pipeline" (whether using a pipeline, or referrring to it from a general sense) should be on our soldiers. It is 100% the duty of IT to ensure that all applications that are custom built, or bought, adhere to strict governing policies to ensure no accidental or unnecessary disclosure of information or data to anyone who does not have a need to know. / I would recommend using STIGs as a reference, and any other guidelines from IRS Application requirements, as well as properly using Managed Environments, and implementing Solution Checker. / 3.3.2025 - UPDATE: We met with Justin I Lewis and he approved of the document as-is. No additional information needs to be included or provided. / 2.28.2025 - UPDATE: We have another meeting on Monday 3.3.2025 @ 1500 (3:00PM) Eastern to gather new updates and get feedback from Cyber and privacy. We have a deadline of 3.14.2025 to have agreement on Solution Architecture document. / 2.18.2025-UPDATE: Ron will work with Ramya to get a meeting together with a member of Privacy, Cyber and One SDLC to determine what is required (if anything) from them for each.
- 60: Need boiler plate statement from management that the Power Platform admin and support team does not troubleshoot end user/customer code. / Add this statment to our SharePoint PowerPlatform Central home page. / Have copy/paste email we can use for emails/tickets. / -Idea is to have Michael coordinate with Monique so that the statement carries appropriate authority. / 2.18.2025-UPDATE: Michael is going to check with Monique and Mary - they are creating an MOU to resolve this issue, and we will be able to use that both when discussing with individuals as well as placing a version of that on the site pages re-work.
- 61: Microsoft has training for this. See Kashif from MS.
- 62: From: Tatis Vera Cristian T <Cristian.T.TatisVera@irs.gov> / Sent: Wednesday, October 30, 2024 2:51 PM / Cc: Lambourne Andrew S <Andrew.S.Lambourne@irs.gov>; Porterfield Tabitha D <Tabitha.D.Porterfield@irs.gov> / Subject: ▶️ Latest Release Self Service News / Hello readers -- this quarters issue of the Self Service Spotlight is here from IRWorks Communications. / The highlights: / ??> Change in Motion: Transforming Software Development / ??> EDI Customer Success Story and more…/ Thanks for reading! Scroll on… / ~Self Service Spotlight / laptop on screen with hands typing on keyboard / IRWorks Internal REvenue Workflow Optimization, Requests and knowledge system powered by servicenow / Table of Contents / Change in Motion Self Service Catalog Updates IRS Service Central by the Numbers Employee Resource Center Go Live Anti Harassment Customer Success Story Training Opportunities Helpful Hint / Streamlining Systems with Smart Automation / Change in Motion: Transforming Software Development / Direct File and Gitlab Teams Move Forward with Automation / Accelerating Automation 55hours down to 5 minutes two stop watches with the respective times labeled within colored red and greenOn August 28, Team Direct File and Gitlab partnered to use the Gitlab pipeline automation successfully deploying changes in less than 5 minutes. / Combined with the appropriate ticketing in IRWorks, this reduces the time Direct File needs to deploy program updates and changes from approximately 24 to 55 hours down to less than 5 minutes. This also increases the potential for addressing outages and reducing system downtime. / With updates approved by one designated product owner and changes deployed in less than 5 minutes, these new capabilities allow Direct File to deploy as often as necessary a new standard for the Gitlab pipeline. / Finally, these updates allow for greater speed to market delivering new functionality, services and capabilities for the American taxpayer. / Self Service Catalog Updates / Check out some of the new tools just dropped in the IRS Service Central catalog, opening even more opportunities for self-service! Ready to save time and add another tool to your toolbox? / Lets get started with: / Integrated Data Retrieval System (IDRS) Online Reports Services (IORS) Unit and Unit Security Representative (USR) Database (IUUD) update: IRS employees can request to obtain current information about IDRS units and security personnel. / Ability to Create or Deactivate Service Restoration Team (SRT) Group: Users can request to create or deactivate an SRT group according to set of specifications. / User Experience (UX) Tools Training/Services: A new catalog item will now streamline capturing the growing requests to obtain assistance for UX tools. / AppDynamics (AppD) Support: Three (3) catalog items related to AppD application support have been created. Users can now place requests for the following: / AppD Advanced Monitoring Request Monitor requests for applications integrated with AppD base APM monitoring. / AppD Platform Support Submit AppD platform support requests related to updates, hotfixes, security, release features, upgrades, or issues. / AppD Monitoring Support Submit requests to receive monitoring support for any applications integrated with AppD. / Tablet Related Requests: Three (3) catalog items related to IRS-issued tablets have been created. Users can report: / Damaged tablet / Request new or replacement tablet accessories / Report a lost or stolen tablet / ~Looking for another tool or how-to reference? Visit, IRWorks how-to questions. / IRS Service Central By the Numbers / Employee Resource Center Go Live / The Employee Resource Center went live July 2023; with 14 icon of a person filling brain with knowledge, multi color gears pouring into brainnew services that support expanded case creation via bulk upload, workflows for the employee referral bonus program, anti-harassment support, and better data collection for state and local taxes. Our primary focus is making the IRWorks experience easier and streamlined, with information readily available for employees and agents alike. / We have started calculating return on investments with our value realization decks. Once the workflow has deployed, we can measure labor cost savings. / Our ongoing collaboration with IT has ensured our continued transformational success, and we look forward to a long and successful partnership! / The IRS Office of Equity, Diversity, and Inclusion (EDI) recently sought to create a centralized, secure location and automated process that employees can use to report anti-harassment (AH) allegations and request consultation and training sessions with an AH specialist. / In just six weeks, the team deployed three new AH services on the IRS Service Central portal, including: / Requesting a consultation with an AH Specialist / Filing an allegation with the AH Program Office / Requesting an AH training session / Access controls ensure privacy for all parties. Initial benefits include: / Specialists benefit from the automated workflows and at-a-glance dashboards that have replaced manual processes, which feature auto-notifications, reminders, and communication tools. / With the IRS Service Central request forms, employees have a more user-friendly and consistent way to report and track concerns about bullying and harassment through an Enterprise tool. / Previously, these services were scattered across legacy systems and manual processes, and AH allegations were submitted through the EDI Anti-Harassment Program mailbox. By adding the anti-harassment workflow, IRS personnel benefit from the powerful capabilities of the platform. The organization has a strong ongoing commitment to provide a work environment free from all forms of harassment and discrimination. / ~ / training opportunities available from ServiceNow / Create your account and request access to these resources: / Employees who want to learn more about the IRWorks ServiceNow platform can take free ServiceNow Now Learning self-paced/on-demand courses. These courses offer: / Technical certifications / Hands-on labs/simulators for practice / Workshops and learning paths that combine courses for specific roles / For more information visit the Knowledge Article on IRS Service Central and including the ServiceNow Training site for a list of training plans designed to support active IRWorks modules / To access the training courses: / Sign up for a ServiceNow Now Learning account. Select the Sign up link in the top right corner of the page and complete all fields. Please use your IRS.gov e-mail address. / Request a learning account be created on IRS Service Central. If you do not complete this step, you will not gain access to the free courses outlined. / Now Learning account requests are processed once per week due to volume. Please allow at least 5-7 business days for completion. For questions, submit an IRWorks How-To Question on IRS Service Central. Employees should coordinate with their manager for all training conducted during work hours. / Helpful Hint: / Optimize Your Search in the IRWorks Catalog / Clicking through dropdown navigation menus can be time consuming; often the search function is the quickest and easiest method to find what you are looking for in IRWorks catalogue. / Search results can be sorted! Want to only return resoures for tickets? Click the tab at the top of the returns indicating tickets. / If what you are searching for isnt coming up, try using a similar word. Instead of searching for outlook, we will search for email. / Read ticket descriptions carefully! To avoid improperly completing service tickets, take time to ensure the one you select is the correct one and that it is completed. / IRWorks Internal Revenue Workflow Optimization, Requests and Knowledge system powered by service now / On July 31, 2023, IRS Service Central launched providing IRS employees a more user-friendly, one-stop shop of resources and service requests supporting employees from onboarding to retirement. / Have feedback? Lets keep the conversation going! Send it Email outline: it.irworks.help@irs.gov
- 63: Drop screen grabs here: / Office 365 - Common Services & Architecture - Power Platform - All Documents / CISA - requires proof that we are addressing their core Governance concerns. Glen Sitton has put together a place to put the proof elements (artifacts). Ron will get with Sam to resolve this issue.
- 64: Create a new document for Solution Architecture. This file will be required by all IRS personnel with the intent of having a production Power Playform object (App. flow. Power BI dashboard, etc.) exposed to one or more other IRS personnel for use. / This document will be reviewed and must be approved prior to deployment to production. / 3.3.2025 - UPDATE: We met with Justin I Lewis and he approved of the document as-is. No additional information needs to be included or provided. / 2.13.2025-UPDATE: Sent to Ben Weeks for final Approval. / 2.13.2025-UPDATE: Created an initial draft and sent to team to review for a Team review on 2.13.
- 65: The Power Platform site pages on M365 Central have not been fully completed, nor has it been updated to reflect future and upcoming practices. / These need to be updated to reflect what we have learned and what would be best for users who need to know information about Power Platform. Based on the requests and the interactions we have had - should assist in our re-shaping the site pages. / UPDATE: Created a document that reviewed the current site pages, and offered some suggestions on what to change, remove and add. Sent the document to the group and will meet on 2.13 to review and take additional actions.
- 66: This meeting is to determine the structure and basic (general) content of the Site pages to be redesigned. See document for more information, and this links to #63
